# WeKeBA

How a schedule from MS Project changed from version to version. A marks actual dates.

## Version 1 (saved 2014-09-16)

Note of the change: Project Planning

| ID | Task | Duration | Start | Finish | Predecessors | Total float |
| --- | --- | --- | --- | --- | --- | --- |
| 1 | Sensor anschliessen | 4h | 2014-09-01 08:00 | 2014-09-01 12:00 |  | 0d |
| 2 | A/D-Wandlung getaktet | 6h | 2014-09-01 13:00 | 2014-09-02 10:00 | 1 | 0d |
| 3 | CAN-Bus in Betrieb nehmen | 4h | 2014-09-01 08:00 | 2014-09-01 12:00 |  | 1.5d |
| 4 | Ereigniserkennung | 6h | 2014-09-02 10:00 | 2014-09-02 17:00 | 2 | 0d |
| 5 | Speicherkonzept Sensoreinheit | 4h | 2014-09-01 08:00 | 2014-09-01 12:00 |  | 1.5d |
| 6 | Busprotokoll | 12h | 2014-09-01 13:00 | 2014-09-02 17:00 | 10 | 0d |
| 7 | Tester | 12h | 2014-09-01 08:00 | 2014-09-02 12:00 |  | 0.5d |
| 8 | Filesystem | 4h | 2014-09-01 13:00 | 2014-09-01 17:00 | 10 | 0.25d |
| 9 | Speicherkonzept Datenlogger | 6h | 2014-09-02 08:00 | 2014-09-02 15:00 | 8 | 0.25d |
| 10 | Timestamp | 4h | 2014-09-01 08:00 | 2014-09-01 12:00 |  | 0d |
| 11 | UART-Kommandozeile | 8h | 2014-09-01 08:00 | 2014-09-01 17:00 |  | 1d |
| 12 | PCB Konzept | 2h | 2014-09-01 08:00 | 2014-09-01 10:00 |  | 0.5d |
| 13 | PCB Schaltplan | 3h | 2014-09-01 10:00 | 2014-09-01 14:00 | 12 | 0.5d |
| 14 | PCB Layout | 1h | 2014-09-01 14:00 | 2014-09-01 15:00 | 13 | 0.5d |
| 15 | PCB Löten | 4h | 2014-09-01 15:00 | 2014-09-02 10:00 | 14 | 0.75d |
| 16 | Gehäuse | 6h | 2014-09-01 15:00 | 2014-09-02 12:00 | 14 | 0.5d |
| 17 | Pflichtenheft | 6h | 2014-09-01 08:00 | 2014-09-01 15:00 |  | 0.25d |
| 18 | Konzept | 8h | 2014-09-01 15:00 | 2014-09-02 15:00 | 17 | 0.25d |

## Version 2 (saved 2014-09-29)

Note of the change: Merge branch 'master' of https://github.com/tokeller/WeKeBA

Last finish 2014-09-02 → 2014-12-23 (+112d). Complete tasks 0 → 5.

Added:

| ID | Task | Duration | Start | Finish | Predecessors | Constraint | Resources |
| --- | --- | --- | --- | --- | --- | --- | --- |
| 1 | **Software** | 13.75d | 2014-09-01 08:00 A | 2014-10-14 15:00 |  |  |  |
| 5 | Timestamp | 4h | 2014-09-30 10:00 | 2014-09-30 15:00 | 34 | start no earlier than 2014-09-30 08:00 |  |
| 6 | Busprotokoll | 24h | 2014-09-30 15:00 | 2014-10-13 15:00 | 35 |  |  |
| 7 | UART-Kommandozeile | 16h | 2014-10-06 10:00 | 2014-10-13 10:00 | 36 |  |  |
| 9 | Speicherung Datenlogger | 16h | 2014-10-07 15:00 | 2014-10-14 15:00 | 32 |  |  |
| 10 | Speicherung Sensoreinheit | 16h | 2014-09-01 13:00 | 2014-09-08 12:00 | 33 |  |  |
| 11 | **Hardware** | 13.25d | 2014-09-01 08:00 A | 2014-10-14 10:00 |  |  |  |
| 12 | Sensor auf Platte montiert | 2h | 2014-09-08 13:00 | 2014-09-08 15:00 | 13 |  | Tobias Keller |
| 14 | CAN-Bus/Transceiver | 4h | 2014-09-01 08:00 A | 2014-09-01 12:00 A |  |  | Tobias Keller |
| 15 | SD-Karte anschliessen | 1d | 2014-09-02 08:00 A | 2014-09-02 17:00 A |  |  | Tobias Keller; Tobias Welti |
| 16 | MS1: Hardware in Betrieb | 0d | 2014-09-26 17:00 | 2014-09-26 17:00 |  |  |  |
| 18 | Anschlüsse/Stecker | 5h | 2014-09-29 16:00 | 2014-09-30 12:00 | 17 |  | Tobias Welti |
| 22 | PCB Printen | 9.75d | 2014-09-29 13:00 | 2014-10-13 10:00 | 21 |  | extern |
| 24 | **Tester** | 0.5d | 2014-09-01 08:00 | 2014-09-01 12:00 |  |  |  |
| 25 | Verifizierung | 4h | 2014-09-01 08:00 | 2014-09-01 12:00 |  |  |  |
| 27 | **Dokumentation** | 4d | 2014-09-22 08:00 | 2014-09-30 17:00 |  |  |  |
| 29 | Konzept-Doku | 8h | 2014-09-30 08:00 | 2014-09-30 17:00 |  | finish no earlier than 2014-09-30 17:00 | Tobias Welti |
| 30 | **Konzept** | 11.75d | 2014-09-01 08:00 | 2014-10-07 15:00 |  |  |  |
| 31 | **Software-Konzept** | 11.75d | 2014-09-01 08:00 | 2014-10-07 15:00 |  |  |  |
| 37 | **Hardware-Konzept** | 1d | 2014-09-15 08:00 | 2014-09-15 17:00 |  |  |  |
| 38 | Hardware-Konzept | 1d | 2014-09-15 08:00 | 2014-09-15 17:00 |  | start no earlier than 2014-09-15 08:00 |  |
| 41 | MS2: Gehäuse/PCB fertig | 0d | 2014-10-15 17:00 | 2014-10-15 17:00 |  |  |  |
| 42 | MS3: Software fertig | 0d | 2014-11-25 08:00 | 2014-11-25 08:00 |  |  |  |
| 43 | MS4: Testing done | 0d | 2014-12-16 08:00 | 2014-12-16 08:00 |  |  |  |
| 44 | MS5: Doku fertig | 0d | 2014-12-23 17:00 | 2014-12-23 17:00 |  |  |  |

Removed: 18 Konzept

Changed:

| ID | Task | Start | Finish | Duration | Complete | Total float | Predecessors | Other |
| --- | --- | --- | --- | --- | --- | --- | --- | --- |
| 2 | A/D-Wandlung getaktet | 2014-09-01 13:00 → 2014-09-15 08:00 (+14d) | 2014-09-02 10:00 → 2014-09-15 15:00 (+13d) |  |  | 0d → 8d |  | constraint none → start no earlier than 2014-09-15 08:00; resources Tobias Keller [40%] → Tobias Keller |
| 3 | CAN-Bus in Betrieb nehmen | 2014-09-01 08:00 A | 2014-09-01 12:00 → 2014-09-01 14:00 A | 4h → 5h | 0% → 100% | 1.5d → none |  | resources Tobias Keller [40%]; Tobias Welti [40%] → Tobias Keller |
| 4 | Ereigniserkennung | 2014-09-02 10:00 → 2014-09-15 15:00 (+13d) | 2014-09-02 17:00 → 2014-09-16 15:00 (+14d) | 6h → 8h |  | 0d → 8d |  | resources Tobias Welti [40%] → Tobias Welti |
| 8 | Filesystem | 2014-09-01 13:00 → 2014-10-06 08:00 (+35d) | 2014-09-01 17:00 → 2014-10-06 17:00 (+35d) | 4h → 8h |  | 0.25d → 20.25d |  | constraint none → start no earlier than 2014-10-06 08:00; resources none → Tobias Keller; Tobias Welti |
| 13 | Sensor anschliessen | 2014-09-01 08:00 → 2014-09-08 08:00 A (+7d) | 2014-09-01 12:00 → 2014-09-08 12:00 (+7d) |  | 0% → 50% | 0d → 9.5d |  | resources none → Tobias Keller; Tobias Welti |
| 17 | Gehäuse | 2014-09-01 15:00 → 2014-09-29 13:00 (+28d) | 2014-09-02 12:00 → 2014-09-29 16:00 (+27d) | 6h → 3h |  | 0.5d → 4.25d |  | resources none → Tobias Welti |
| 19 | PCB Konzept | 2014-09-01 08:00 → 2014-09-21 08:00 A (+20d) | 2014-09-01 10:00 → 2014-09-21 10:00 A (+20d) |  | 0% → 100% | 0.5d → none |  | resources none → Tobias Welti |
| 20 | PCB Schaltplan | 2014-09-01 10:00 → 2014-09-29 08:00 A (+28d) | 2014-09-01 14:00 → 2014-09-29 10:00 A (+28d) | 3h → 2h | 0% → 100% | 0.5d → none |  | resources none → Tobias Welti |
| 21 | PCB Layout | 2014-09-01 14:00 → 2014-09-29 10:00 (+28d) | 2014-09-01 15:00 → 2014-09-29 12:00 (+28d) | 1h → 2h |  |  |  | resources none → Tobias Welti |
| 23 | PCB Löten | 2014-09-01 15:00 → 2014-10-13 10:00 (+42d) | 2014-09-02 10:00 → 2014-10-14 10:00 (+42d) | 4h → 8h |  | 0.75d → 0.5d | 21 → 22 |  |
| 26 | Analog-Generator |  | 2014-09-02 12:00 → 2014-09-01 12:00 (-1d) | 12h → 4h |  | 0.5d → 13.25d |  | was named Tester |
| 28 | Pflichtenheft | 2014-09-01 08:00 → 2014-09-22 08:00 (+21d) | 2014-09-01 15:00 → 2014-09-22 17:00 (+21d) | 6h → 8h |  | 0.25d → 6.75d |  | constraint none → finish no earlier than 2014-09-22 17:00; resources Tobias Welti [40%] → Tobias Welti |
| 32 | Speicherkonzept Datenlogger | 2014-09-02 08:00 → 2014-10-07 08:00 (+35d) | 2014-09-02 15:00 → 2014-10-07 15:00 (+35d) |  |  | 0.25d → 20.25d |  |  |
| 34 | Timestamp | 2014-09-01 08:00 → 2014-09-30 08:00 (+29d) | 2014-09-01 12:00 → 2014-09-30 10:00 (+29d) | 4h → 2h |  | 0d → 21d |  | constraint none → start no earlier than 2014-09-30 08:00 |
| 35 | Busprotokoll | 2014-09-01 13:00 → 2014-09-30 10:00 (+29d) | 2014-09-02 17:00 → 2014-09-30 15:00 (+28d) | 12h → 4h |  | 0d → 21.25d |  |  |
| 36 | UART-Kommandozeile | 2014-09-01 08:00 → 2014-09-30 15:00 (+29d) | 2014-09-01 17:00 → 2014-10-06 10:00 (+35d) | 8h → 4h |  | 1d → 21.75d | none → 35 |  |

## Version 3 (saved 2014-10-07)

Note of the change: Projektplanung update

Last finish stays 2014-12-23. Complete tasks 5 → 9.

Changed:

| ID | Task | Start | Finish | Duration | Complete | Total float | Predecessors |
| --- | --- | --- | --- | --- | --- | --- | --- |
| 1 | **Konzept** | 2014-09-01 08:00 A |  |  | 0% → 29% | 22.25d → 20.25d |  |
| 2 | **Software-Konzept** | 2014-09-01 08:00 → 2014-09-30 08:00 (+29d) |  | 11.75d → 2.75d |  |  |  |
| 4 | Speicherkonzept Sensoreinheit | 2014-09-01 08:00 → 2014-10-07 08:00 (+36d) | 2014-09-01 12:00 → 2014-10-07 12:00 (+36d) |  |  | 31.5d → 20.5d | none → 18 |
| 8 | **Hardware-Konzept** | 2014-09-15 08:00 → 2014-09-01 08:00 A (-14d) | 2014-09-15 17:00 → 2014-09-01 17:00 A (-14d) |  | 0% → 100% | 29d → none |  |
| 9 | Hardware-Konzept | 2014-09-15 08:00 → 2014-09-01 08:00 A (-14d) | 2014-09-15 17:00 → 2014-09-01 17:00 A (-14d) |  | 0% → 100% | 29d → none |  |
| 11 | **Software** |  |  |  | 5% → 11% |  |  |
| 12 | A/D-Wandlung getaktet | 2014-09-15 08:00 A | 2014-09-15 15:00 A |  | 0% → 100% | 8d → none |  |
| 20 | Speicherung Sensoreinheit | 2014-09-01 13:00 → 2014-10-07 13:00 (+36d) | 2014-09-08 12:00 → 2014-10-14 12:00 (+36d) |  |  | 11.25d → 20.5d |  |
| 22 | **Hardware** |  |  |  | 15% → 21% |  |  |
| 24 | Sensor anschliessen |  | 2014-09-08 12:00 A |  | 50% → 100% | 9.5d → none |  |
| 28 | Gehäuse | 2014-09-29 13:00 A |  |  | 0% → 75% | 4.25d → 24.5d |  |
| 32 | PCB Layout | 2014-09-29 10:00 A | 2014-09-29 12:00 A |  | 0% → 100% | 0.5d → none |  |

## Version 4 (saved 2014-10-13)

Note of the change: projektplan, ereigniserkennung

Last finish stays 2014-12-23.

Added:

| ID | Task | Duration | Start | Finish | Constraint |
| --- | --- | --- | --- | --- | --- |
| 40 | Messung Stromverbrauch | 1d? | 2014-12-01 08:00 | 2014-12-01 17:00 | start no earlier than 2014-11-29 08:00 |

Changed:

| ID | Task | Finish | Duration | Complete | Total float | Other |
| --- | --- | --- | --- | --- | --- | --- |
| 22 | **Hardware** | 2014-10-14 10:00 → 2014-10-27 10:00 (+13d) | 13.25d → 16.25d | 21% → 13% | 20.75d → 17.75d |  |
| 34 | PCB Löten | 2014-10-14 10:00 → 2014-10-27 10:00 (+13d) | 8h → 10d |  | 20.75d → 17.75d | resources none → extern |

## Version 5 (saved 2014-10-20)

Note of the change: Tageswerk Montag...

Last finish stays 2014-12-23. Complete tasks 9 → 10.

Added:

| ID | Task | Duration | Start | Finish |
| --- | --- | --- | --- | --- |
| 52 | Watchdog | 1d? | 2014-09-01 08:00 | 2014-09-01 17:00 |

Changed:

| ID | Task | Start | Finish | Duration | Complete | Total float |
| --- | --- | --- | --- | --- | --- | --- |
| 1 | **Konzept** |  |  |  | 29% → 22% |  |
| 6 | Busprotokoll |  | 2014-09-30 15:00 → 2014-10-06 15:00 (+6d) | 4h → 12h |  | 21.25d → 20.25d |
| 7 | UART-Kommandozeile | 2014-09-30 15:00 → 2014-10-06 15:00 (+6d) | 2014-10-06 10:00 → 2014-10-07 10:00 (+1d) |  |  | 21.75d → 20.75d |
| 16 | Busprotokoll | 2014-09-30 15:00 → 2014-10-06 15:00 (+6d) | 2014-10-13 15:00 → 2014-10-14 15:00 (+1d) |  |  | 21.25d → 20.25d |
| 17 | UART-Kommandozeile | 2014-10-06 10:00 → 2014-10-07 10:00 (+1d) | 2014-10-13 10:00 → 2014-10-14 10:00 (+1d) |  |  | 21.75d → 20.75d |
| 22 | **Hardware** |  |  |  | 13% → 54% |  |
| 33 | PCB Printen | 2014-09-29 13:00 A | 2014-10-13 10:00 A |  | 0% → 100% | 17.5d → none |

## Version 6 (saved 2014-10-21)

Note of the change: Merge branch 'master' of https://github.com/tokeller/WeKeBA

Last finish stays 2014-12-23.

Changed:

| ID | Task | Other |
| --- | --- | --- |
| 6 | Busprotokoll | resources none → Tobias Keller |

## Version 7 (saved 2014-10-28)

Note of the change: Projektplanung

Last finish 2014-12-23 → 2014-12-19 (-4d). Complete tasks 10 → 15.

Changed:

| ID | Task | Start | Finish | Complete | Total float |
| --- | --- | --- | --- | --- | --- |
| 22 | **Hardware** |  |  | 54% → 99% | 17.75d → 0d |
| 23 | Sensor auf Platte montiert | 2014-09-08 13:00 A | 2014-09-08 15:00 A | 0% → 100% |  |
| 27 | MS1: Hardware in Betrieb | 2014-09-26 17:00 A | 2014-09-26 17:00 A | 0% → 100% |  |
| 28 | Gehäuse |  | 2014-09-29 16:00 A | 75% → 100% | 24.5d → none |
| 29 | Anschlüsse/Stecker | 2014-09-29 16:00 A | 2014-09-30 12:00 A | 0% → 100% | 24.5d → none |
| 34 | PCB Löten | 2014-10-13 10:00 A | 2014-10-27 10:00 A | 0% → 100% | 17.75d → none |
| 35 | MS2: Gehäuse/PCB fertig | 2014-10-15 17:00 A |  | 0% → 75% |  |
| 50 | MS5: Doku fertig | 2014-12-23 17:00 → 2014-12-19 08:00 (-4d) | 2014-12-23 17:00 → 2014-12-19 08:00 (-4d) |  |  |

## Version 8 (saved 2014-11-03)

Note of the change: event detection

Last finish stays 2014-12-19.

Added:

| ID | Task | Duration | Start | Finish | Predecessors |
| --- | --- | --- | --- | --- | --- |
| 21 | Watchdog | 1d? | 2014-09-29 08:00 | 2014-09-29 17:00 | 28 |

Changed:

| ID | Task | Duration | Complete |
| --- | --- | --- | --- |
| 11 | **Software** | 13.75d → 13.75d? | 11% → 10% |

## Version 9 (saved 2014-11-17)

Note of the change: Konzept: Bus-System mehr Entscheidungskriterien hinzugefügt, aus whitepaper IXXAT

Last finish stays 2014-12-19. Complete tasks 15 → 16.

Changed:

| ID | Task | Start | Finish | Duration | Complete | Total float |
| --- | --- | --- | --- | --- | --- | --- |
| 11 | **Software** |  | 2014-10-14 15:00 → 2014-11-17 17:00 (+34d) | 13.75d? → 23d? | 10% → 17% | 18.25d → 9d |
| 14 | Ereigniserkennung | 2014-09-15 15:00 → 2014-11-14 08:00 A (+60d) | 2014-09-16 15:00 → 2014-11-17 17:00 A (+62d) |  | 0% → 100% | 26.25d → none |

## Version 10 (saved 2014-12-15)

Note of the change: planung

Last finish stays 2014-12-19. Complete tasks 16 → 15.

Changed:

| ID | Task | Start | Finish | Duration | Complete | Total float |
| --- | --- | --- | --- | --- | --- | --- |
| 11 | **Software** |  | 2014-11-17 17:00 → 2014-10-14 15:00 (-34d) | 23d? → 13.75d? | 17% → 10% | 9d → 18.25d |
| 14 | Ereigniserkennung | 2014-11-14 08:00 A → 2014-09-15 15:00 (-60d) | 2014-11-17 17:00 A → 2014-09-16 15:00 (-62d) |  | 100% → 0% | none → 26.25d |

## Version 11 (saved 2014-12-16)

Note of the change: Merge branch 'master' of https://github.com/tokeller/WeKeBA

Last finish stays 2014-12-19.

Added:

| ID | Task | Duration | Start | Finish | Constraint | Resources |
| --- | --- | --- | --- | --- | --- | --- |
| 41 | Bericht | 10d | 2014-11-11 08:00 | 2014-12-15 17:00 | start no earlier than 2014-11-11 08:00 | Tobias Keller; Tobias Welti |

Removed: 21 Watchdog; 53 Watchdog

Changed:

| ID | Task | Start | Finish | Duration | Complete | Total float | Predecessors | Other |
| --- | --- | --- | --- | --- | --- | --- | --- | --- |
| 1 | **Konzept** |  | 2014-10-07 15:00 → 2014-10-07 10:00 | 11.75d → 11.25d |  | 18.25d → 18.75d |  |  |
| 2 | **Software-Konzept** | 2014-09-30 08:00 → 2014-09-01 08:00 (-29d) | 2014-10-07 15:00 → 2014-10-07 10:00 | 2.75d → 11.25d |  | 18.25d → 18.75d |  |  |
| 3 | Speicherkonzept Datenlogger | 2014-10-07 08:00 → 2014-09-01 08:00 (-36d) | 2014-10-07 15:00 → 2014-09-01 15:00 (-36d) |  |  | 18.25d → 28.25d | 17 → none |  |
| 4 | Speicherkonzept Sensoreinheit | 2014-10-07 08:00 → 2014-09-01 08:00 (-36d) | 2014-10-07 12:00 → 2014-09-01 12:00 (-36d) |  |  | 18.5d → 28.5d | 17 → none |  |
| 10 | **Software** |  | 2014-10-14 15:00 → 2014-10-28 17:00 (+14d) | 13.75d? → 18d | 10% → 11% | 18.25d → 14d |  |  |
| 17 | Filesystem | 2014-10-06 08:00 → 2014-10-20 08:00 (+14d) | 2014-10-06 17:00 → 2014-10-20 17:00 (+14d) |  |  | 18.25d → 15d | 5 → 5, 3, 4 | constraint start no earlier than 2014-10-06 08:00 → start no earlier than 2014-10-20 08:00 |
| 18 | Speicherung Datenlogger | 2014-10-07 15:00 → 2014-10-27 08:00 (+20d) | 2014-10-14 15:00 → 2014-10-28 17:00 (+14d) |  |  | 18.25d → 14d | 3 → 17 | constraint none → start no earlier than 2014-10-27 08:00 |
| 19 | Speicherung Sensoreinheit | 2014-10-07 13:00 → 2014-10-27 08:00 (+20d) | 2014-10-14 12:00 → 2014-10-28 17:00 (+14d) |  |  | 18.5d → 14d | 4 → 17 | constraint none → start no earlier than 2014-10-27 08:00 |
| 20 | **Hardware** |  | 2014-10-27 10:00 → 2014-10-27 17:00 | 16.25d → 17d |  |  |  |  |
| 33 | MS2: Gehäuse/PCB fertig | 2014-10-15 17:00 A → 2014-10-27 17:00 A (+12d) | 2014-10-15 17:00 → 2014-10-27 17:00 (+12d) |  |  |  |  |  |
| 34 | **Tester** | 2014-09-01 08:00 → 2014-09-15 15:00 (+14d) | 2014-09-01 12:00 → 2014-10-07 10:00 (+36d) | 0.5d → 6.5d |  | 31.5d → 20.75d |  |  |
| 35 | Verifizierung | 2014-09-01 08:00 → 2014-10-06 15:00 (+35d) | 2014-09-01 12:00 → 2014-10-07 10:00 (+36d) |  |  | 31.5d → 20.75d | none → 3, 4, 5, 6 |  |
| 36 | Analog-Generator | 2014-09-01 08:00 → 2014-09-15 15:00 (+14d) | 2014-09-01 12:00 → 2014-09-16 10:00 (+15d) |  |  | 31.5d → 26.75d | none → 11 |  |
| 37 | Messung Stromverbrauch | 2014-12-01 08:00 → 2014-12-02 08:00 (+1d) | 2014-12-01 17:00 → 2014-12-02 17:00 (+1d) |  |  | 5d → 4d |  | constraint start no earlier than 2014-11-29 08:00 → start no earlier than 2014-12-02 08:00 |
| 38 | **Dokumentation** |  | 2014-09-30 17:00 → 2014-12-15 17:00 (+76d) | 4d → 25d |  | 22d → 1d |  |  |
| 42 | MS3: Software fertig | 2014-11-25 08:00 → 2014-11-29 17:00 (+4d) | 2014-11-25 08:00 → 2014-11-29 17:00 (+4d) |  |  |  |  |  |
